# V2_WBS_COCINA

Schedule from MS Project, 2020-05-12 to 2020-08-04, costs in S.

## Calendars

- Standard: Mon-Fri 09:00-13:00, 15:00-19:00; Sat-Sun off.

## Resources

| Resource | Rate |
| --- | --- |
| Orestes Ramirez | 6 |
| Leydi Huallpa | 6 |
| Angela Balaguer | 6 |

## Schedule

| ID | WBS | Task | Duration | Start | Finish | Predecessors | Total slack | Constraint | Resources | Work | Cost |
| --- | --- | --- | --- | --- | --- | --- | --- | --- | --- | --- | --- |
| 1 | 1 | **APP PARA EL SEGUIMIENTO DE MERCADOS MOVIL** | 61d? | 2020-05-12 | 2020-08-04 |  | 0d |  |  | 1384h | 8,304 |
| 2 | 1.1 | **FASE INICIO** | 27d? | 2020-05-12 | 2020-06-17 |  | 0d |  |  | 296h | 1,776 |
| 3 | 1.1.1 | **Iniciacion** | 2d | 2020-05-12 | 2020-05-13 |  | 0d |  |  | 16h | 96 |
| 4 | 1.1.1.1 | Idea de Proyecto | 2d | 2020-05-12 | 2020-05-13 |  | 0d | start no earlier than 2020-05-12 | Orestes Ramirez | 16h | 96 |
| 5 | 1.1.2 | **Planificacion** | 2d | 2020-05-14 | 2020-05-15 | 3 | 0d |  |  | 32h | 192 |
| 6 | 1.1.2.1 | EDT WBS | 2d | 2020-05-14 | 2020-05-15 |  | 0d |  | Leydi Huallpa | 16h | 96 |
| 7 | 1.1.2.2 | **Normatividad** | 2d | 2020-05-14 | 2020-05-15 |  | 0d |  |  | 16h | 96 |
| 8 | 1.1.2.2.1 | Estandares de Programacion | 2d | 2020-05-14 | 2020-05-15 |  | 0d |  | Leydi Huallpa | 16h | 96 |
| 9 | 1.1.3 | **Ejecucion** | 21d? | 2020-05-18 | 2020-06-15 | 5 | 0d |  |  | 192h | 1,152 |
| 10 | 1.1.3.1 | Requerimientos | 10d | 2020-05-18 | 2020-05-29 |  | 0d |  | Leydi Huallpa | 80h | 480 |
| 11 | 1.1.3.2 | Prototipos | 2d | 2020-06-01 | 2020-06-02 | 10 | 0d |  | Angela Balaguer | 16h | 96 |
| 12 | 1.1.3.3 | **Arquitectura** | 19d? | 2020-05-18 | 2020-06-11 |  | 2d |  |  | 64h | 384 |
| 13 | 1.1.3.3.1 | Diagrama de Procesos | 1d? | 2020-05-18 | 2020-05-18 |  | 20d |  | Leydi Huallpa | 8h | 48 |
| 14 | 1.1.3.3.2 | Vista de casos de uso | 4d | 2020-06-03 | 2020-06-08 | 11 | 0d |  | Angela Balaguer | 32h | 192 |
| 15 | 1.1.3.3.3 | Diagrama de actividades | 2d | 2020-06-09 | 2020-06-10 | 14 | 0d |  | Leydi Huallpa | 16h | 96 |
| 16 | 1.1.3.3.4 | Vista de despliegue | 1d | 2020-06-11 | 2020-06-11 | 15 | 0d |  | Orestes Ramirez | 8h | 48 |
| 17 | 1.1.3.4 | **Gestion** | 21d | 2020-05-18 | 2020-06-15 |  | 0d |  |  | 32h | 192 |
| 18 | 1.1.3.4.1 | Matriz de riesgos | 2d | 2020-05-18 | 2020-05-19 |  | 19d |  | Angela Balaguer | 16h | 96 |
| 19 | 1.1.3.4.2 | Matriz de trazabilidad | 2d | 2020-06-12 | 2020-06-15 | 16 | 0d |  | Leydi Huallpa | 16h | 96 |
| 20 | 1.1.4 | **Calidad** | 2d | 2020-06-16 | 2020-06-17 | 9 | 0d |  |  | 48h | 288 |
| 21 | 1.1.4.1 | Checklist de Requerimientos | 2d | 2020-06-16 | 2020-06-17 |  | 0d |  | Angela Balaguer | 16h | 96 |
| 22 | 1.1.4.2 | Checklist de Analisis | 2d | 2020-06-16 | 2020-06-17 |  | 0d |  | Leydi Huallpa | 16h | 96 |
| 23 | 1.1.4.3 | Checklist de Diseño | 2d | 2020-06-16 | 2020-06-17 |  | 0d |  | Orestes Ramirez | 16h | 96 |
| 24 | 1.1.5 | **Conformidades** | 1d | 2020-05-18 | 2020-05-19 |  | 21.5d |  |  | 8h | 48 |
| 25 | 1.1.5.1 | Actas | 1d | 2020-05-18 | 2020-05-19 |  | 21.5d |  | Angela Balaguer | 8h | 48 |

| ID | WBS | Task | Duration | Start | Finish | Predecessors | Total slack | Resources | Work | Cost |
| --- | --- | --- | --- | --- | --- | --- | --- | --- | --- | --- |
| 26 | 1.2 | **FASE ELABORACION** | 11d? | 2020-06-18 | 2020-07-02 | 2 | 0d |  | 488h | 2,928 |
| 27 | 1.2.1 | **Plan de Iteracion 01** | 3d | 2020-06-18 | 2020-06-22 |  | 0d |  | 192h | 1,152 |
| 28 | 1.2.1.1 | Elaboracion de Plan de Iteracion 01 | 3d | 2020-06-18 | 2020-06-22 | 2 | 0d | Angela Balaguer; Leydi Huallpa; Orestes Ramirez | 72h | 432 |
| 29 | 1.2.1.2 | **Analisis y Diseño** | 2d | 2020-06-18 | 2020-06-19 |  | 1d |  | 48h | 288 |
| 30 | 1.2.1.2.1 | Diagrama de Casos de Uso | 1d | 2020-06-18 | 2020-06-18 |  | 2d | Orestes Ramirez | 8h | 48 |
| 31 | 1.2.1.2.2 | Diagrama de Actividades | 1d | 2020-06-18 | 2020-06-18 |  | 2d | Leydi Huallpa | 8h | 48 |
| 32 | 1.2.1.2.3 | Elaboracion del MER | 1d | 2020-06-18 | 2020-06-18 |  | 2d | Angela Balaguer | 8h | 48 |
| 33 | 1.2.1.2.4 | Elaboracion de la Base de datos | 1d | 2020-06-18 | 2020-06-18 |  | 2d | Angela Balaguer | 8h | 48 |
| 34 | 1.2.1.2.5 | Prototipos del sistema | 2d | 2020-06-18 | 2020-06-19 |  | 1d | Orestes Ramirez | 16h | 96 |
| 35 | 1.2.1.3 | **Implementacion** | 3d | 2020-06-18 | 2020-06-22 |  | 0d |  | 24h | 144 |
| 36 | 1.2.1.3.1 | **Desarrollo de requerimientos Altos** | 3d | 2020-06-18 | 2020-06-22 |  | 0d |  | 24h | 144 |
| 37 | 1.2.1.3.1.1 | Modulo Gestionar Recetas | 3d | 2020-06-18 | 2020-06-22 |  | 0d | Angela Balaguer | 24h | 144 |
| 38 | 1.2.1.4 | **Pruebas** | 2d | 2020-06-18 | 2020-06-19 |  | 1d |  | 48h | 288 |
| 39 | 1.2.1.4.1 | Documento de Pruebas Unitarias | 2d | 2020-06-18 | 2020-06-19 |  | 1d | Leydi Huallpa; Angela Balaguer; Orestes Ramirez | 48h | 288 |
| 40 | 1.2.2 | **Plan de Iteracion 02** | 8d? | 2020-06-23 | 2020-07-02 | 27 | 0d |  | 296h | 1,776 |
| 41 | 1.2.2.1 | Elaboracion de Plan de Iteracion 02 | 8d | 2020-06-23 | 2020-07-02 |  | 0d | Angela Balaguer; Leydi Huallpa; Orestes Ramirez | 192h | 1,152 |
| 42 | 1.2.2.2 | **Diseño del sistema** | 3d | 2020-06-23 | 2020-06-25 |  | 5d |  | 48h | 288 |
| 43 | 1.2.2.2.1 | Revision de la arquitectura del sistema | 1d | 2020-06-23 | 2020-06-23 |  | 7d | Orestes Ramirez | 8h | 48 |
| 44 | 1.2.2.2.2 | Elaboracion del MER | 1d | 2020-06-23 | 2020-06-23 |  | 7d | Angela Balaguer | 8h | 48 |
| 45 | 1.2.2.2.3 | Elaboracion de la Base de datos | 1d | 2020-06-23 | 2020-06-23 |  | 7d | Leydi Huallpa | 8h | 48 |
| 46 | 1.2.2.2.4 | Prototipos del sistema | 3d | 2020-06-23 | 2020-06-25 |  | 5d | Orestes Ramirez | 24h | 144 |
| 47 | 1.2.2.3 | **Implementacion** | 3d? | 2020-06-23 | 2020-06-25 |  | 5d |  | 40h | 240 |
| 48 | 1.2.2.3.1 | **Desarrollo de requerimientos Altos** | 3d? | 2020-06-23 | 2020-06-25 |  | 5d |  | 40h | 240 |
| 49 | 1.2.2.3.1.1 | Modulo ABC | 3d | 2020-06-23 | 2020-06-25 |  | 5d | Angela Balaguer | 24h | 144 |
| 50 | 1.2.2.3.1.2 | Modulo ABC | 1d? | 2020-06-23 | 2020-06-23 |  | 7d | Leydi Huallpa | 8h | 48 |
| 51 | 1.2.2.3.1.3 | Modulo ABC | 1d? | 2020-06-23 | 2020-06-23 |  | 7d | Orestes Ramirez | 8h | 48 |

| ID | WBS | Task | Duration | Start | Finish | Predecessors | Total slack | Resources | Work | Cost |
| --- | --- | --- | --- | --- | --- | --- | --- | --- | --- | --- |
| 52 | 1.2.2.4 | **Pruebas** | 1d | 2020-06-23 | 2020-06-23 |  | 7d |  | 16h | 96 |
| 53 | 1.2.2.4.1 | Revision de Matriz de Trazabilidad | 1d | 2020-06-23 | 2020-06-23 |  | 7d | Angela Balaguer | 8h | 48 |
| 54 | 1.2.2.4.2 | Revision de Gestion de Riesgos | 1d | 2020-06-23 | 2020-06-23 |  | 7d | Leydi Huallpa | 8h | 48 |
| 55 | 1.3 | **FASE CONSTRUCCION** | 18d | 2020-07-03 | 2020-07-28 | 26 | 0d |  | 432h | 2,592 |
| 56 | 1.3.1 | **Iteracion 01** | 12d | 2020-07-03 | 2020-07-20 |  | 0d |  | 288h | 1,728 |
| 57 | 1.3.1.1 | Elaboracion del plan de iteracion 01 | 12d | 2020-07-03 | 2020-07-20 |  | 0d | Angela Balaguer; Leydi Huallpa; Orestes Ramirez | 288h | 1,728 |
| 58 | 1.3.2 | **Iteracion 02** | 6d | 2020-07-21 | 2020-07-28 | 57 | 0d |  | 144h | 864 |
| 59 | 1.3.2.1 | Elaboracion del plan de iteracion 02 | 6d | 2020-07-21 | 2020-07-28 |  | 0d | Angela Balaguer; Leydi Huallpa; Orestes Ramirez | 144h | 864 |
| 60 | 1.4 | **FASE CIERRE** | 5d | 2020-07-29 | 2020-08-04 | 55 | 0d |  | 168h | 1,008 |
| 61 | 1.4.1 | ejecucion de pruebas | 2d | 2020-07-29 | 2020-07-30 |  | 3d | Leydi Huallpa; Angela Balaguer; Orestes Ramirez | 48h | 288 |
| 62 | 1.4.2 | manual de usuario | 5d | 2020-07-29 | 2020-08-04 |  | 0d | Angela Balaguer; Leydi Huallpa; Orestes Ramirez | 120h | 720 |
